# Schedule

Schedule from MS Project, 2014-09-19 to 2015-07-02.
SPecialiST RePack

## Calendars

- Стандартный: Mon-Fri 09:00-13:00, 14:00-18:00; Sat-Sun off.

## Schedule

| ID | WBS | Task | Duration | Start | Finish | Predecessors | Total slack | Free slack | Constraint |
| --- | --- | --- | --- | --- | --- | --- | --- | --- | --- |
| 1 | 1 | **Глобал** | 156d | 2014-09-19 | 2015-04-24 |  | 49d |  |  |
| 2 | 1.1 | **Охранная часть** | 22d | 2014-09-19 | 2014-10-20 |  | 183d |  |  |
| 3 | 1.1.1 | Сбор требований | 2d | 2014-09-19 | 2014-09-22 |  | 183d | 0d |  |
| 4 | 1.1.2 | Реализация | 10d | 2014-09-23 | 2014-10-06 | 3 | 183d | 0d |  |
| 5 | 1.1.3 | Сбор стенда. Тестирование и отладка | 10d | 2014-10-07 | 2014-10-20 | 4 | 183d |  |  |
| 6 | 1.2 | **СКД** | 56d | 2014-09-19 | 2014-12-05 |  | 149d |  |  |
| 7 | 1.2.1 | Сбор требований | 2d | 2014-09-19 | 2014-09-22 |  | 183d | 0d | start no earlier than 2014-09-19 |
| 8 | 1.2.2 | Реализация | 10d | 2014-09-23 | 2014-10-06 | 7 | 183d | 0d |  |
| 9 | 1.2.3 | Сбор стенда. Тестирование и отладка | 10d | 2014-10-07 | 2014-10-20 | 8 | 183d |  |  |
| 10 | 1.2.4 | **МПТ** | 35d | 2014-10-20 | 2014-12-05 |  | 149d |  |  |
| 11 | 1.2.4.1 | Сборка стенда | 3d | 2014-10-20 | 2014-10-22 |  | 176d | 0d | start no earlier than 2014-10-19 |
| 12 | 1.2.4.2 | Тестирование и отладка | 5d | 2014-10-23 | 2014-10-29 | 11 | 176d |  |  |
| 13 | 1.2.4.3 | **НС** | 8d | 2014-10-31 | 2014-11-11 |  | 167d |  |  |
| 14 | 1.2.4.3.1 | Сборка стенда | 3d | 2014-10-31 | 2014-11-04 |  | 167d | 0d | start no earlier than 2014-10-31 |
| 15 | 1.2.4.3.2 | Тестирование и отладка | 5d | 2014-11-05 | 2014-11-11 | 14 | 167d |  |  |
| 16 | 1.2.4.4 | **Автономность работы автоматики** | 20d | 2014-11-10 | 2014-12-05 |  | 149d |  |  |
| 17 | 1.2.4.4.1 | Перенос части автоматической логики с ГК на КАУ | 10d | 2014-11-10 | 2014-11-21 |  | 149d | 0d | start no earlier than 2014-11-08 |
| 18 | 1.2.4.4.2 | Тестирование и отладка | 10d | 2014-11-24 | 2014-12-05 | 17 | 149d |  |  |
| 19 | 1.3 | Реализация взаимодействия всех подсистем | 100d | 2014-12-08 | 2015-04-24 |  | 49d |  | start no earlier than 2014-12-06 |
| 20 | 2 | **СКД для RVI** | 167d | 2014-09-19 | 2015-05-11 |  | 38d |  |  |
| 21 | 2.1 | **Релиз 1** | 67d | 2014-09-19 | 2014-12-22 |  | 138d |  |  |
| 22 | 2.1.1 | Реализация минимальных требование на Релиз 1 | 20d | 2014-09-19 | 2014-10-16 |  | 138d | 0d |  |
| 23 | 2.1.2 | Тестирование и отладка | 20d | 2014-10-17 | 2014-11-13 | 22 | 138d | 0d |  |
| 24 | 2.1.3 | Интеграция с 1С | 20d | 2014-11-14 | 2014-12-11 | 23 | 138d | 0d |  |
| 25 | 2.1.4 | Экспорт отчета Т-13 | 7d | 2014-12-12 | 2014-12-22 | 24 | 138d |  |  |

| ID | WBS | Task | Duration | Start | Finish | Predecessors | Total slack | Free slack | Constraint |
| --- | --- | --- | --- | --- | --- | --- | --- | --- | --- |
| 26 | 2.2 | **Релиз 2** | 40d | 2014-12-22 | 2015-02-13 |  | 99d |  |  |
| 27 | 2.2.1 | Реализация | 20d | 2014-12-22 | 2015-01-16 |  | 99d | 0d | start no earlier than 2014-12-22 |
| 28 | 2.2.2 | Тестирование и отладка | 20d | 2015-01-19 | 2015-02-13 | 27 | 99d |  |  |
| 29 | 2.3 | **Релиз 3** | 40d | 2015-02-12 | 2015-04-08 |  | 61d |  |  |
| 30 | 2.3.1 | Реализация | 20d | 2015-02-12 | 2015-03-11 |  | 61d | 0d | start no earlier than 2015-02-12 |
| 31 | 2.3.2 | Тестирование и отладка | 20d | 2015-03-12 | 2015-04-08 | 30 | 61d |  |  |
| 32 | 2.4 | **Сценарии управления** | 167d | 2014-09-19 | 2015-05-11 |  | 38d |  |  |
| 33 | 2.4.1 | Выполнение СУ по событию в журнале | 5d | 2014-09-19 | 2014-09-25 |  | 38d | 0d |  |
| 34 | 2.4.2 | Выполнение СУ по событию по состоянию объект | 5d | 2014-09-26 | 2014-10-02 | 33 | 38d | 0d |  |
| 35 | 2.4.3 | Управление объектами ГК | 5d | 2014-10-03 | 2014-10-09 | 34 | 38d | 0d |  |
| 36 | 2.4.4 | Управление объектами СКД RVI | 5d | 2014-10-10 | 2014-10-16 | 35 | 38d | 0d |  |
| 37 | 2.4.5 | Управление объектами видео RVI-VSS | 5d | 2014-10-17 | 2014-10-23 | 36 | 38d | 0d |  |
| 38 | 2.4.6 | Сбор требований к типовым сценариям управления | 5d | 2014-10-24 | 2014-10-30 | 37 | 38d | 0d |  |
| 39 | 2.4.7 | Реализация типовых сценариев управления | 5d | 2014-10-31 | 2014-11-06 | 38 | 38d | 0d |  |
| 40 | 2.4.8 | Сбор стенда для тестирования | 2d | 2014-11-07 | 2014-11-10 | 39 | 38d | 0d |  |
| 41 | 2.4.9 | Тестирование и отладка | 20d | 2014-11-11 | 2014-12-08 | 40 | 38d | 0d |  |
| 42 | 2.4.10 | Функции управления коллекциями | 10d | 2014-12-09 | 2014-12-22 | 41 | 38d | 0d |  |
| 43 | 2.4.11 | Развитие номенклатуры функций автоматизации | 100d | 2014-12-23 | 2015-05-11 | 42 | 38d |  |  |
| 44 | 3 | **Сценарии управления пользовательским интерфейсом** | 205d | 2014-09-19 | 2015-07-02 |  | 0d |  |  |
| 45 | 3.1 | Развитие элементов управления на макетах | 20d | 2014-09-19 | 2014-10-16 |  | 0d |  |  |
| 46 | 3.2 | Публикация свойства элементов управления, которыми можно управлять | 10d | 2014-10-17 | 2014-10-30 | 45 | 0d |  |  |
| 47 | 3.3 | Функции управления элементами интерфейса | 10d | 2014-10-31 | 2014-11-13 | 46 | 0d |  |  |
| 48 | 3.4 | Сценарии управления, выполняемые на клиенте | 10d | 2014-11-14 | 2014-11-27 | 47 | 0d |  |  |
| 49 | 3.5 | Дочерние окна макетов | 10d | 2014-11-28 | 2014-12-11 | 48 | 0d |  |  |
| 50 | 3.6 | Связывание элементов управления с аргументами процедуры | 10d | 2014-12-12 | 2014-12-25 | 49 | 0d |  |  |
| 51 | 3.7 | Сбор требований к типовым сценариям управления | 5d | 2014-12-26 | 2015-01-01 | 50 | 0d |  |  |
| 52 | 3.8 | Реализация типовых сценариев управления | 10d | 2015-01-02 | 2015-01-15 | 51 | 0d |  |  |
| 53 | 3.9 | Тестирование и отладка | 20d | 2015-01-16 | 2015-02-12 | 52 | 0d |  |  |
| 54 | 3.10 | Развитие номенклатуры элементов управления и функциий | 100d | 2015-02-13 | 2015-07-02 | 53 | 0d |  |  |
| 55 | 3.11 | Светлая цветовая гамма интерфейса | 30d | 2014-10-23 | 2014-12-03 |  | 151d |  | start no earlier than 2014-10-23 |

| ID | WBS | Task | Duration | Start | Finish | Predecessors | Total slack | Free slack | Constraint |
| --- | --- | --- | --- | --- | --- | --- | --- | --- | --- |
| 56 | 3.12 | **Видео** | 35d | 2014-12-01 | 2015-01-16 |  | 119d |  |  |
| 57 | 3.12.1 | Разработка требований к сервису RVI-VSS | 5d | 2014-12-01 | 2014-12-05 |  | 119d | 0d | start no earlier than 2014-12-01 |
| 58 | 3.12.2 | Реализация взаимодействия с RVI-VSS | 20d | 2014-12-08 | 2015-01-02 | 57 | 119d | 0d |  |
| 59 | 3.12.3 | Сценарии управления видеоустройствами | 10d | 2015-01-05 | 2015-01-16 | 58 | 119d |  |  |
